# Children's Book Schedule

Schedule from MS Project, 2012-04-23 to 2015-11-26, costs in $, A marks actual dates.
Lucerne Publishing

## Calendars

- Standard: Mon-Fri 08:00-12:00, 13:00-17:00; Sat-Sun off.
- Monday-Wednesday: Mon-Wed 08:00-12:00, 13:00-17:00; Thu-Sun off.

## Resources

| Resource | Group | Unit | Rate |
| --- | --- | --- | --- |
| Võ Anh Kiệt | Editorial |  | 52.5 |
| Chỉnh sửa bản sao | Editorial |  | 45 |
| Nguyễn Khuyến | Design |  | 75.5 |
| Võ Văn A | Editorial |  | 38.75 |
| Nguyễn B | Editorial |  | 63.25 |
| Tần Tảo | Editorial |  | 42 |
| Thúy Vân | Design |  | 70 |
| Dịch vụ in | Production |  |  |
| Travel | Other |  |  |
| Nguyễn Nam | Other |  |  |
| Dịch vụ đồ họa | Production |  |  |
| Bound galley proofs | Production | copies | 15 |

## Schedule

| ID | WBS | Task | Type | Duration | Start | Finish | Predecessors | Complete | Remaining | Baseline start | Baseline finish | Baseline duration | Total slack | Constraint | Deadline | Resources | Work | Actual work | Cost | Baseline cost | Actual cost | Editorial Focus |
| --- | --- | --- | --- | --- | --- | --- | --- | --- | --- | --- | --- | --- | --- | --- | --- | --- | --- | --- | --- | --- | --- | --- |
| 1 | 1 | **Hợp nhân viên biên tập** |  | 780.12d | 2012-04-23 08:00 A | 2015-04-20 09:00 |  | 15% | 660.11d | 2015-04-13 08:00 | 2015-07-06 09:00 | 60.12d | 158.75d |  |  |  | 45.5h | 7h | 2,223 | 2,223 | 342 |  |
| 2 | 1.1 | Hợp nhân viên biên tập 1 |  | 1h | 2015-04-13 08:00 A | 2015-04-13 09:00 A |  | 100% |  | 2015-04-13 08:00 | 2015-04-13 09:00 | 1h |  | start no earlier than 2015-04-13 08:00 |  | Võ Anh Kiệt; Tần Tảo; Võ Văn A; Nguyễn Khuyến [50%] | 3.5h | 3.5h | 171 | 171 | 171 |  |
| 3 | 1.2 | Hợp nhân viên biên tập 2 |  | 1h | 2015-04-20 08:00 A | 2015-04-20 09:00 A |  | 100% |  | 2015-04-20 08:00 | 2015-04-20 09:00 | 1h |  | start no earlier than 2015-04-20 08:00 |  | Võ Anh Kiệt; Tần Tảo; Võ Văn A; Nguyễn Khuyến [50%] | 3.5h | 3.5h | 171 | 171 | 171 |  |
| 4 | 1.3 | Hợp nhân viên biên tập 3 |  | 1h | 2012-04-23 08:00 | 2012-04-23 09:00 |  |  |  | 2015-04-27 08:00 | 2015-04-27 09:00 | 1h | 938.75d | start no earlier than 2012-04-23 08:00 |  | Võ Anh Kiệt; Tần Tảo; Võ Văn A; Nguyễn Khuyến [50%] | 3.5h |  | 171 | 171 |  |  |
| 5 | 1.4 | Hợp nhân viên biên tập 4 |  | 1h | 2012-04-30 08:00 | 2012-04-30 09:00 |  |  |  | 2015-05-04 08:00 | 2015-05-04 09:00 | 1h | 933.75d | start no earlier than 2012-04-30 08:00 |  | Võ Anh Kiệt; Tần Tảo; Võ Văn A; Nguyễn Khuyến [50%] | 3.5h |  | 171 | 171 |  |  |
| 6 | 1.5 | Hợp nhân viên biên tập 5 |  | 1h | 2012-05-07 08:00 | 2012-05-07 09:00 |  |  |  | 2015-05-11 08:00 | 2015-05-11 09:00 | 1h | 928.75d | start no earlier than 2012-05-07 08:00 |  | Võ Anh Kiệt; Tần Tảo; Võ Văn A; Nguyễn Khuyến [50%] | 3.5h |  | 171 | 171 |  |  |
| 7 | 1.6 | Hợp nhân viên biên tập 6 |  | 1h | 2012-05-14 08:00 | 2012-05-14 09:00 |  |  |  | 2015-05-18 08:00 | 2015-05-18 09:00 | 1h | 923.75d | start no earlier than 2012-05-14 08:00 |  | Võ Anh Kiệt; Tần Tảo; Võ Văn A; Nguyễn Khuyến [50%] | 3.5h |  | 171 | 171 |  |  |
| 8 | 1.7 | Hợp nhân viên biên tập 7 |  | 1h | 2012-05-21 08:00 | 2012-05-21 09:00 |  |  |  | 2015-05-25 08:00 | 2015-05-25 09:00 | 1h | 918.75d | start no earlier than 2012-05-21 08:00 |  | Võ Anh Kiệt; Tần Tảo; Võ Văn A; Nguyễn Khuyến [50%] | 3.5h |  | 171 | 171 |  |  |
| 9 | 1.8 | Hợp nhân viên biên tập 8 |  | 1h | 2012-05-28 08:00 | 2012-05-28 09:00 |  |  |  | 2015-06-01 08:00 | 2015-06-01 09:00 | 1h | 913.75d | start no earlier than 2012-05-28 08:00 |  | Võ Anh Kiệt; Tần Tảo; Võ Văn A; Nguyễn Khuyến [50%] | 3.5h |  | 171 | 171 |  |  |
| 10 | 1.9 | Hợp nhân viên biên tập 9 |  | 1h | 2012-06-04 08:00 | 2012-06-04 09:00 |  |  |  | 2015-06-08 08:00 | 2015-06-08 09:00 | 1h | 908.75d | start no earlier than 2012-06-04 08:00 |  | Võ Anh Kiệt; Tần Tảo; Võ Văn A; Nguyễn Khuyến [50%] | 3.5h |  | 171 | 171 |  |  |
| 11 | 1.10 | Hợp nhân viên biên tập 10 |  | 1h | 2012-06-11 08:00 | 2012-06-11 09:00 |  |  |  | 2015-06-15 08:00 | 2015-06-15 09:00 | 1h | 903.75d | start no earlier than 2012-06-11 08:00 |  | Võ Anh Kiệt; Tần Tảo; Võ Văn A; Nguyễn Khuyến [50%] | 3.5h |  | 171 | 171 |  |  |
| 12 | 1.11 | Hợp nhân viên biên tập 11 |  | 1h | 2012-06-18 08:00 | 2012-06-18 09:00 |  |  |  | 2015-06-22 08:00 | 2015-06-22 09:00 | 1h | 898.75d | start no earlier than 2012-06-18 08:00 |  | Võ Anh Kiệt; Tần Tảo; Võ Văn A; Nguyễn Khuyến [50%] | 3.5h |  | 171 | 171 |  |  |
| 13 | 1.12 | Hợp nhân viên biên tập 12 |  | 1h | 2012-06-25 08:00 | 2012-06-25 09:00 |  |  |  | 2015-06-29 08:00 | 2015-06-29 09:00 | 1h | 893.75d | start no earlier than 2012-06-25 08:00 |  | Võ Anh Kiệt; Tần Tảo; Võ Văn A; Nguyễn Khuyến [50%] | 3.5h |  | 171 | 171 |  |  |
| 14 | 1.13 | Hợp nhân viên biên tập 13 |  | 1h | 2012-07-02 08:00 | 2012-07-02 09:00 |  |  |  | 2015-07-06 08:00 | 2015-07-06 09:00 | 1h | 888.75d | start no earlier than 2012-07-02 08:00 |  | Võ Anh Kiệt; Tần Tảo; Võ Văn A; Nguyễn Khuyến [50%] | 3.5h |  | 171 | 171 |  |  |
| 15 | 2 | **Sự tiếp nhận** |  | 35.5d | 2015-04-06 08:00 A | 2015-05-25 12:00 |  | 58% | 14.77d | 2015-04-06 08:00 | 2015-05-25 12:00 | 35.5d | 0d |  |  |  | 444h | 228h | 18,264 | 18,264 | 11,612 |  |
| 16 | 2.1 | Nhận bản thảo | milestone | 0d | 2015-04-06 08:00 A | 2015-04-06 08:00 A |  | 100% |  | 2015-04-06 08:00 | 2015-04-06 08:00 | 0d |  |  |  |  |  |  |  |  |  |  |
| 17 | 2.2 | Biên tập nội dung |  | 15d | 2015-04-06 08:00 A | 2015-04-30 10:00 A | 16 | 100% |  | 2015-04-06 08:00 | 2015-04-30 10:00 | 15d |  |  |  | Võ Anh Kiệt | 120h | 120h | 6,300 | 6,300 | 6,300 | Full developmental edit |
| 18 | 2.3 | Đánh giá tác phẩm gốc |  | 10.25d | 2015-04-23 10:00 A | 2015-05-07 12:00 | 17FS-5d | 66% | 3.5d | 2015-04-23 10:00 | 2015-05-07 12:00 | 10.25d | 0d |  |  | Võ Văn A; Nguyễn B | 164h | 108h | 8,364 | 8,364 | 5,312 |  |
| 19 | 2.4 | Đánh giá của tác giả về nội dung biên tập |  | 12d | 2015-05-07 13:00 | 2015-05-25 12:00 | 17, 18 |  |  | 2015-05-07 13:00 | 2015-05-25 12:00 | 12d | 0d |  |  | Nguyễn Nam; Chỉnh sửa bản sao | 160h |  | 3,600 | 3,600 |  | Incorp must-fix issues |
| 20 | 2.5 | Bàn giao cho bộ phận biên tập | milestone | 0d | 2015-05-25 12:00 | 2015-05-25 12:00 | 19 |  |  | 2015-05-25 12:00 | 2015-05-25 12:00 | 0d | 0d |  | 2015-05-29 17:00 | Võ Anh Kiệt |  |  |  |  |  |  |
| 21 | 3 | **Biên tập** |  | 29.12d | 2015-05-25 13:00 | 2015-07-03 14:00 | 15 |  |  | 2015-05-25 13:00 | 2015-07-03 14:00 | 29.12d | 0d |  |  |  | 400h |  | 15,670 | 15,670 |  |  |
| 22 | 3.1 | Sắp xếp bản thảo cho bản sao |  | 5.12d | 2015-05-25 13:00 | 2015-06-01 14:00 |  |  |  | 2015-05-25 13:00 | 2015-06-01 14:00 | 5.12d | 0d |  |  | Võ Văn A; Nguyễn Khuyến [50%] | 60h |  | 3,060 | 3,060 |  | Address outstanding line edit issues |
| 23 | 3.2 | Bản sao |  | 11.25d | 2015-06-01 14:00 | 2015-06-16 16:00 | 22 |  |  | 2015-06-01 14:00 | 2015-06-16 16:00 | 11.25d | 0d |  |  | Chỉnh sửa bản sao [200%] | 180h |  | 8,100 | 8,100 |  | Style Guide compliance |
| 24 | 3.3 | Đánh giá của tác giả về bản sao |  | 10d | 2015-06-16 16:00 | 2015-06-30 16:00 | 23 |  |  | 2015-06-16 16:00 | 2015-06-30 16:00 | 10d | 0d |  |  | Nguyễn Nam; Chỉnh sửa bản sao [25%] | 100h |  | 900 | 900 |  | Incorp must-fix issues |
| 25 | 3.4 | Kết hợp bản sao |  | 5.12d | 2015-06-26 11:00 | 2015-07-03 14:00 | 24FS-2.5% |  |  | 2015-06-26 11:00 | 2015-07-03 14:00 | 5.12d | 0d |  |  | Võ Anh Kiệt; Nguyễn Khuyến [50%] | 60h |  | 3,610 | 3,610 |  | Incorp must-fix issues |
| 26 | 3.5 | Bàn giao cho bộ phận sản xuất | milestone | 0d | 2015-07-03 14:00 | 2015-07-03 14:00 | 25 |  |  | 2015-07-03 14:00 | 2015-07-03 14:00 | 0d | 0d |  |  | Võ Văn A |  |  |  |  |  |  |

| ID | WBS | Task | Type | Duration | Start | Finish | Predecessors | Baseline start | Baseline finish | Baseline duration | Total slack | Free slack | Constraint | Calendar | Resources | Work | Cost | Baseline cost |
| --- | --- | --- | --- | --- | --- | --- | --- | --- | --- | --- | --- | --- | --- | --- | --- | --- | --- | --- |
| 27 | 4 | **Thiết kế và sản xuất** |  | 58.25d | 2015-07-03 14:00 | 2015-09-23 16:00 | 21 | 2015-07-03 14:00 | 2015-09-23 16:00 | 58.25d | 0d |  |  |  |  | 888h | 46,679 | 46,679 |
| 28 | 4.1 | Thiết lập trang |  | 15d | 2015-07-03 14:00 | 2015-07-24 14:00 |  | 2015-07-03 14:00 | 2015-07-24 14:00 | 15d | 0d |  |  |  | Nguyễn B | 120h | 7,590 | 7,590 |
| 29 | 4.2 | Thiết kế nội dung minh họa |  | 15.25d | 2015-07-03 14:00 | 2015-07-24 16:00 | 28SS | 2015-07-03 14:00 | 2015-07-24 16:00 | 15.25d | 0d |  |  |  | Thúy Vân; Võ Văn A | 240h | 13,050 | 13,050 |
| 30 | 4.3 | **Đánh giá trang thứ nhất** |  | 30d | 2015-07-24 16:00 | 2015-09-04 16:00 | 29 | 2015-07-24 16:00 | 2015-09-04 16:00 | 30d | 0d |  |  |  |  | 320h | 13,860 | 13,860 |
| 31 | 4.3.1 | Hiệu đính vfa lập chỉ mục |  | 10d | 2015-07-24 16:00 | 2015-08-07 16:00 |  | 2015-07-24 16:00 | 2015-08-07 16:00 | 10d | 0d |  | start no earlier than 2015-07-17 08:00 |  | Nguyễn Nam; Chỉnh sửa bản sao | 100h | 900 | 900 |
| 32 | 4.3.2 | Incorporate 1st Pages review |  | 10d | 2015-08-07 16:00 | 2015-08-21 16:00 | 31 | 2015-08-07 16:00 | 2015-08-21 16:00 | 10d | 0d |  |  |  | Võ Văn A; Nguyễn Khuyến [50%] | 120h | 6,120 | 6,120 |
| 33 | 4.3.3 | Send proofed pages to Production | milestone | 0d | 2015-08-21 16:00 | 2015-08-21 16:00 | 32 | 2015-08-21 16:00 | 2015-08-21 16:00 | 0d | 0d |  |  |  | Võ Văn A |  |  |  |
| 34 | 4.3.4 | Enter page corrections and index |  | 5d | 2015-08-21 16:00 | 2015-08-28 16:00 | 33 | 2015-08-21 16:00 | 2015-08-28 16:00 | 5d | 0d |  |  |  | Nguyễn B; Nguyễn Khuyến [50%] | 60h | 4,040 | 4,040 |
| 35 | 4.3.5 | Cover design |  | 5d | 2015-08-28 16:00 | 2015-09-04 16:00 | 34 | 2015-08-28 16:00 | 2015-09-04 16:00 | 5d | 0d |  |  |  | Thúy Vân | 40h | 2,800 | 2,800 |
| 36 | 4.4 | **2nd Pages review** |  | 13d | 2015-09-04 16:00 | 2015-09-23 16:00 |  | 2015-09-04 16:00 | 2015-09-23 16:00 | 13d | 0d |  |  |  |  | 120h | 6,345 | 6,345 |
| 37 | 4.4.1 | Proof and review |  | 6.5d | 2015-09-04 16:00 | 2015-09-15 11:00 | 35 | 2015-09-04 16:00 | 2015-09-15 11:00 | 6.5d | 0d |  |  |  | Võ Văn A | 40h | 1,800 | 1,800 |
| 38 | 4.4.2 | Send proofed pages to Production | milestone | 0d | 2015-09-15 11:00 | 2015-09-15 11:00 | 37 | 2015-09-15 11:00 | 2015-09-15 11:00 | 0d | 0d |  |  |  | Võ Văn A |  |  |  |
| 39 | 4.4.3 | Final review |  | 5d | 2015-09-16 16:00 | 2015-09-23 16:00 | 38 | 2015-09-16 16:00 | 2015-09-23 16:00 | 5d | 0d |  |  |  | Nguyễn B; Võ Văn A [50%]; Võ Anh Kiệt [50%]; Bound galley proofs [20 copies] | 80h | 4,545 | 4,545 |
| 40 | 4.5 | **Design book's companion website** |  | 10d | 2015-09-04 16:00 | 2015-09-18 16:00 | 30 | 2015-09-04 16:00 | 2015-09-18 16:00 | 10d | 3d |  |  |  |  | 88h | 5,834 | 5,834 |
| 41 | 4.5.1 | Create mockup |  | 4.5d | 2015-09-04 16:00 | 2015-09-16 16:00 |  | 2015-09-04 16:00 | 2015-09-16 16:00 | 4.5d | 3d | 0d |  |  | Thúy Vân; Võ Văn A | 48h | 2,610 | 2,610 |
| 42 | 4.5.2 | Review with author |  | 2d | 2015-09-16 16:00 | 2015-09-18 16:00 | 41 | 2015-09-16 16:00 | 2015-09-18 16:00 | 2d | 3d |  |  |  | Thúy Vân; Nguyễn Nam; Travel [0.1%]; Nguyễn Khuyến [50%] | 40h | 3,224 | 3,224 |
| 43 | 5 | **Color prep and printing** |  | 46d | 2015-09-23 16:00 | 2015-11-26 16:00 | 40 | 2015-09-23 16:00 | 2015-11-26 16:00 | 46d | 0d |  |  |  |  | 328h | 5,310 | 5,310 |
| 44 | 5.1 | Send to color house |  | 1d | 2015-09-23 16:00 | 2015-09-28 16:00 | 36 | 2015-09-23 16:00 | 2015-09-28 16:00 | 1d | 0d |  |  | Monday-Wednesday | Võ Văn A | 8h | 310 | 310 |
| 45 | 5.2 | Generate proofs |  | 10d | 2015-09-28 16:00 | 2015-10-12 16:00 | 44 | 2015-09-28 16:00 | 2015-10-12 16:00 | 10d | 0d |  |  |  | Dịch vụ đồ họa | 80h | 5,000 | 5,000 |
| 46 | 5.3 | Print and ship |  | 30d | 2015-10-15 16:00 | 2015-11-26 16:00 | 45FS+3d | 2015-10-15 16:00 | 2015-11-26 16:00 | 30d | 0d |  |  |  | Dịch vụ in | 240h |  |  |
| 47 | 6 | **Book launch prep** |  | 22d | 2015-09-28 16:00 | 2015-10-28 16:00 |  | 2015-09-28 16:00 | 2015-10-28 16:00 | 22d | 21d |  |  |  |  | 212h | 9,442 | 9,442 |
| 48 | 6.1 | Launch planning |  | 5d | 2015-09-28 16:00 | 2015-10-05 16:00 | 44 | 2015-09-28 16:00 | 2015-10-05 16:00 | 5d | 21d | 0d |  |  | Võ Anh Kiệt [50%]; Nguyễn B | 36h | 2,062 | 2,062 |
| 49 | 6.2 | Assign launch team members |  | 1d | 2015-10-05 16:00 | 2015-10-06 16:00 | 48 | 2015-10-05 16:00 | 2015-10-06 16:00 | 1d | 21d | 0d |  |  | Võ Anh Kiệt | 8h | 420 | 420 |
| 50 | 6.3 | Complete author questionnaire |  | 5d | 2015-10-06 16:00 | 2015-10-13 16:00 | 49 | 2015-10-06 16:00 | 2015-10-13 16:00 | 5d | 21d | 0d |  |  | Võ Văn A; Nguyễn Nam; Travel [0.1%] | 80h | 3,550 | 3,550 |
| 51 | 6.4 | Schedule author interviews |  | 1d | 2015-10-13 16:00 | 2015-10-14 16:00 | 50 | 2015-10-13 16:00 | 2015-10-14 16:00 | 1d | 21d | 0d |  |  | Võ Văn A | 8h | 310 | 310 |
| 52 | 6.5 | Design and order marketing material |  | 10d | 2015-10-14 16:00 | 2015-10-28 16:00 | 51 | 2015-10-14 16:00 | 2015-10-28 16:00 | 10d | 21d |  |  |  | Võ Văn A | 80h | 3,100 | 3,100 |
